# 26_083 DECATHLON CAMPUS - Planning EXE Phase 1 - GO/VRD/CM/Bardage + SPRINKLAGE

How a schedule from MS Project XML changed from version to version. A marks actual dates.

## Version 1 (data date 2026-11-02, saved 2026-10-05)

Note of the change: Planning EXE Phase 1 sur 15 semaines (sans études ni approvisionnements)

| ID | WBS | Task | Duration | Start | Finish | Predecessors |
| --- | --- | --- | --- | --- | --- | --- |
| 1 | 1 | **1. JALONS** | 1d | 2026-11-02 | 2026-11-02 |  |
| 2 |  | DÉMARRAGE PHASE 1 (OS) - date modifiable via Informations sur le projet | 0d | 2026-11-02 | 2026-11-02 |  |
| 3 | 2 | **2. INSTALLATION DE CHANTIER** | 6d | 2026-11-02 | 2026-11-09 |  |
| 4 |  | [SPK] Clôture de chantier, panneau de chantier, signalisation | 2d | 2026-11-02 | 2026-11-03 | 2 |
| 5 |  | [SPK] Base vie (25 pers., 2 bungalows réunion, ~100 m² stockage SPK) commune aux lots | 2d | 2026-11-04 | 2026-11-05 | 4 |
| 6 |  | [SPK] Raccordement fluides + évacuation de la base vie (eau, électricité, fosse toutes eaux) | 2d | 2026-11-06 | 2026-11-09 | 5 |
| 7 |  | [SPK] Armoire électrique de chantier + point d'eau près de la zone cuve | 1d | 2026-11-06 | 2026-11-06 | 5 |
| 8 |  | [SPK] Protection par bachage des équipements commerciaux et techniques existants | 1d | 2026-11-04 | 2026-11-04 | 4 |
| 9 |  | [GO] Pistes d'accès engins + plateforme de circulation sur géotextile classe 5 | 3d | 2026-11-04 | 2026-11-06 | 4 |
| 10 |  | [GO] Dépose et stockage des bordures béton (réemploi en fin de chantier) | 1d | 2026-11-04 | 2026-11-04 | 4 |
| 11 | 3 | **3. PHASAGE - DÉVOIEMENTS ET MISE HORS SERVICE SOURCE B2** | 66d | 2026-11-04 | 2027-02-08 |  |
| 12 |  | [GO] Piquetage/marquage et reconnaissance des réseaux existants dans l'emprise (DN100 AEP, DN150 incendie, EU/EV/EP/électricité/fibre) | 1d | 2026-11-04 | 2026-11-04 | 4 |
| 13 |  | [GO] Dévoiement réseau incendie DN150 + alimentation AEP/arrosage DN100 hors emprise radier (essais, DOE) | 6d | 2026-11-05 | 2026-11-13 | 12 |
| 14 |  | [VRD] Dévoiement EU / EV / EP / électricité / fibre / arrosage si nécessaire (relevé NCA) | 2d | 2026-11-05 | 2026-11-06 | 12 |
| 15 |  | [SPK] Raccordements provisoires pour maintien de la protection sprinkleur de l'établissement | 3d | 2026-11-04 | 2026-11-06 | 4 |
| 16 |  | [SPK] Consignation + vidange cuve source B2 et réseaux associés (mesures compensatoires actives) | 2d | 2026-11-18 | 2026-11-19 | 15, 112 |
| 17 |  | [SPK/MOA] Mesures compensatoires (renfort sécurité) + gardiennage pendant l'indisponibilité de la source B2 | 57d | 2026-11-18 | 2027-02-08 | 16SS, 136FF |
| 18 | 4 | **4. DÉPOSES ET DÉMOLITIONS - SOURCE B2 / LOCAUX** | 18d | 2026-11-09 | 2026-12-03 |  |
| 19 | 4.1 | **4.1 Cuve B2 et enclos brise-vue** | 18d | 2026-11-09 | 2026-12-03 |  |
| 20 |  | [GO] Dépose brise-vue bois + charpente métallique support + grille d'accès/porte grillagée (évacuation) | 3d | 2026-11-09 | 2026-11-12 | 4, 9 |
| 21 |  | [SPK] Dépose et évacuation de la réserve source B existante + équipements et réseaux associés | 4d | 2026-11-20 | 2026-11-25 | 16, 20 |
| 22 |  | [VRD] Dépose des réseaux existants cuve B2 → local B2 → local A/GE (terrassement, évacuation, remblaiement) | 3d | 2026-11-26 | 2026-11-30 | 21, 16 |
| 23 |  | [GO] Démolition du radier existant + évacuation des gravats (maîtrise poussières) | 3d | 2026-11-26 | 2026-11-30 | 21, 13 |
| 24 |  | [GO] Étêtage des fondations existantes à -1,00 m du niveau plateforme + évacuation | 2d | 2026-11-27 | 2026-11-30 | 23SS+1d |
| 25 |  | [GO] Relevé géomètre + plan de récolement des ouvrages enterrés, adaptation des fondations | 1d | 2026-12-01 | 2026-12-01 | 24 |
| 26 |  | [GO] (OPTION 5.4.4) Purge des fondations profondes existantes (-80 cm sous niveau final) + remblai sablo-graveleux | 2d | 2026-12-02 | 2026-12-03 | 25 |
| 27 | 4.2 | **4.2 Local source B2 et local GE** | 4d | 2026-11-20 | 2026-11-25 |  |
| 28 |  | [SPK] Dépose GMPD source B2 + équipements, tuyauteries aspiration/refoulement (démontage et livraison du GMPD démonté) | 2d | 2026-11-20 | 2026-11-23 | 16 |
| 29 |  | [SPK] Dépose des réseaux existants local GE | 1d | 2026-11-20 | 2026-11-20 | 16 |
| 30 |  | [GO] Dépose des pièces de scellement existantes local B2 + reprise des percements (DN300, DN200, DN150, échappement) | 2d | 2026-11-24 | 2026-11-25 | 28 |
| 31 |  | [GO] Démolition contrôlée réservation dalle basse et soubassement local GE (sciage, mise à nu des armatures) | 2d | 2026-11-23 | 2026-11-24 | 29 |
| 32 |  | [GO] Dépose pièce de scellement existante local GE + création du percement DN200 | 1d | 2026-11-25 | 2026-11-25 | 31 |
| 33 | 5 | **5. FONDATIONS ET RADIER - CUVE B2** | 24d | 2026-12-04 | 2027-01-08 |  |
| 34 |  | [GO] Plateforme de travail pour pieux (portance EV2 > 50 MPa, géotextile) | 2d | 2026-12-04 | 2026-12-07 | 25, 26 |
| 35 |  | [GO] Épuisement des eaux / rabattement de nappe (nappe ~ 27,4 NGF) pendant les fondations | 17d | 2026-12-04 | 2026-12-29 | 34SS, 49FF |
| 36 |  | [GO] Pieux à tarière creuse (amenée/repli du matériel, forage, armatures, béton) - ~20 à 25 u. à confirmer PEO | 4d | 2026-12-08 | 2026-12-11 | 34 |
| 37 |  | [GO] Stockage sur polyane et évacuation des terres et boues de forage + nettoyage voies | 3d | 2026-12-09 | 2026-12-11 | 36SS+1d |
| 38 |  | [GO] Essais et contrôle des pieux (DTU 13.2 / NF P94-262) | 2d | 2026-12-14 | 2026-12-15 | 36 |
| 39 |  | [GO] Recépage des pieux | 1d | 2026-12-14 | 2026-12-14 | 36 |
| 40 |  | [GO] Terrassement fouille radier + substitution remblais de portance + fond de forme (débord 1 m) | 2d | 2026-12-15 | 2026-12-16 | 39 |
| 41 |  | [GO] Puisard de trop-plein de la cuve (terrassement, béton de propreté, grille circulable) | 2d | 2026-12-17 | 2026-12-18 | 40 |
| 42 |  | [GO] Béton de propreté (e >= 5 cm) sous radier | 1d | 2026-12-17 | 2026-12-17 | 40 |
| 43 |  | [GO] Boucle de terre fond de fouille (câble nu 25 mm2, R <= 3 ohms) + attentes de terre cuve | 1d | 2026-12-18 | 2026-12-18 | 42 |
| 44 |  | [GO] Pose massifs, platines et boîtes de réservation de pre-scellement (poteaux brise-vue) | 1d | 2026-12-18 | 2026-12-18 | 42 |
| 45 |  | [GO] Couche de forme + sablon d'égalisation + film polyéthylène | 1d | 2026-12-18 | 2026-12-18 | 42 |
| 46 |  | [GO] Pose et incorporation de la tuyauterie d'aspiration DN300 sous radier (fournie SPK) + validation implantation SPK/GO | 1d | 2026-12-21 | 2026-12-21 | 45 |
| 47 |  | [GO] Drain périphérique / gestion des eaux autour du radier (si G2PRO l'impose) | 1d | 2026-12-21 | 2026-12-21 | 45 |
| 48 |  | [GO] Ferraillage radier (TS + HA), attentes pieux, réservations, fourreaux, coffrage de rives et bêches périphériques | 4d | 2026-12-22 | 2026-12-28 | 46, 44, 43, 47 |
| 49 |  | [GO] Coulage du radier béton C25/30 XC2 XF1 (parement soigné, circulations brossées antidérapantes) | 1d | 2026-12-29 | 2026-12-29 | 48 |
| 50 |  | [GO] Durcissement du radier avant chargement de la cuve (délai à valider BET / bureau de contrôle) | 7d | 2026-12-30 | 2027-01-08 | 49 |
| 51 | 6 | **6. RÉSERVE D'EAU AÉRIENNE B2 (620 m³)** | 23d | 2026-12-30 | 2027-02-01 |  |
| 52 |  | [SPK] Livraison cuve + équipements sur site, réception, stockage | 2d | 2026-12-30 | 2026-12-31 | 49 |
| 53 |  | [SPK] Implantation cuve, pose cornière de fixation, contrôle planéité | 1d | 2027-01-11 | 2027-01-11 | 50, 52 |
| 54 |  | [SPK] Montage cuve boulonnée Ø 12,48 m x H 5,74 m | 6d | 2027-01-12 | 2027-01-19 | 53 |
| 55 |  | [SPK] Pose feutre géotextile + poche PVC (garantie décennale) | 2d | 2027-01-20 | 2027-01-21 | 54 |
| 56 |  | [SPK] Toit autoportant galvanisé, échelle à crinoline, plateforme, trappe cadenassable | 3d | 2027-01-22 | 2027-01-26 | 55 |
| 57 |  | [SPK] Équipements : trop-plein DN150, vidange DN80, remplissage/retour essai DN150 disconnecté, aspiration DN300 anti-vortex, jauge, épingle chauffante, chambre de disconnexion, alarmes | 3d | 2027-01-22 | 2027-01-26 | 55 |
| 58 |  | [GO] Joint ciment périphérique autour de la cornière de fixation de la cuve | 1d | 2027-01-22 | 2027-01-22 | 55 |
| 59 |  | [SPK] Réseaux EU aériens : trop-plein et vidange (DN200), sorties à 1,00 m du nu cuve | 1d | 2027-01-27 | 2027-01-27 | 57 |
| 60 |  | [SPK] Clapet anti-pollution type EA sur arrivée eau de ville DN65 + vers EU + vanne de contre-barrage | 1d | 2027-01-22 | 2027-01-22 | 55 |
| 61 |  | [SPK] Remplissage de la cuve (<= 36 h) + test d'étanchéité | 2d | 2027-01-29 | 2027-02-01 | 57, 56, 58, 60, 77 |
| 62 | 7 | **7. RÉSEAUX ENTERRÉS / TRANCHÉES COMMUNES** | 42d | 2026-12-01 | 2027-01-29 |  |
| 63 | 7.1 | **7.1 Tranchée 1 - cuve B2 ↔ local source B2** | 8d | 2026-12-30 | 2027-01-11 |  |
| 64 |  | [VRD] Ouverture tranchée commune (~ 25 ml estimés) | 2d | 2026-12-30 | 2026-12-31 | 49, 22, 13 |
| 65 |  | [VRD] Fourreaux électriques 2 x Ø90 (local B2 / réserve d'eau) + chambre de tirage | 1d | 2027-01-04 | 2027-01-04 | 64 |
| 66 |  | [SPK] Pose aspiration fonte DN300 + remplissage/retour essai DN150 (butées béton, tiges filetées) de la cuve à la pièce de scellement | 3d | 2027-01-04 | 2027-01-06 | 64, 46, 82 |
| 67 |  | [SPK] Épreuves hydrauliques des réseaux enterrés tranchée 1 | 1d | 2027-01-07 | 2027-01-07 | 66 |
| 68 |  | [VRD] Grillage avertisseur + remblaiement et compactage tranchée 1 (95 % OPM) | 2d | 2027-01-08 | 2027-01-11 | 67, 65 |
| 69 | 7.2 | **7.2 Tranchée 2 - local source B2 ↔ local GE / source A** | 11d | 2026-12-01 | 2026-12-15 |  |
| 70 |  | [VRD] Ouverture tranchée commune (~ 60 ml estimés, sciage voirie lourde + espace vert) | 3d | 2026-12-01 | 2026-12-03 | 22, 13 |

| ID | WBS | Task | Duration | Start | Finish | Predecessors |
| --- | --- | --- | --- | --- | --- | --- |
| 71 |  | [VRD] Fourreaux électriques 2 x Ø90 (local GE / local B2) + chambre de tirage | 1d | 2026-12-04 | 2026-12-04 | 70 |
| 72 |  | [SPK] Pose refoulement fonte DN200 de la pièce de scellement B2 jusqu'au local GE (butées béton) | 4d | 2026-12-04 | 2026-12-09 | 70, 82, 83 |
| 73 |  | [SPK] Épreuves hydrauliques du refoulement enterré tranchée 2 | 1d | 2026-12-10 | 2026-12-10 | 72 |
| 74 |  | [VRD] Grillage avertisseur + remblaiement et compactage tranchée 2 | 3d | 2026-12-11 | 2026-12-15 | 73, 71 |
| 75 | 7.3 | **7.3 Tranchée 3 - EU (puisard trop-plein → regard existant)** | 28d | 2026-12-21 | 2027-01-29 |  |
| 76 |  | [VRD] Tranchée + réseau de collecte extérieur EU PVC DN200 (puisard/vidange → regard existant), regard 500x500 | 3d | 2026-12-21 | 2026-12-23 | 41 |
| 77 |  | [VRD] Raccordement sur réseau EU existant (branchement), boîte de branchement, reprise des sorties EU à 1,00 m | 1d | 2027-01-28 | 2027-01-28 | 76, 59 |
| 78 |  | [VRD] Remblaiement et compactage tranchée EU | 1d | 2027-01-29 | 2027-01-29 | 77 |
| 79 | 7.4 | **7.4 Électricité - réseaux enterrés** | 3d | 2027-01-05 | 2027-01-07 |  |
| 80 |  | [SPK] Réseau aérien + sortie fourreau à 1 m du nu bâtiment, câble TGBT → pénétration, câbles reports d'alarme (tirage) | 3d | 2027-01-05 | 2027-01-07 | 65, 71 |
| 81 | 8 | **8. LOCAL SOURCE B2 / LOCAL GE - SCELLEMENTS ET ÉQUIPEMENTS** | 13d | 2026-11-26 | 2026-12-14 |  |
| 82 |  | [GO] Pose nouvelles pièces de scellement local B2 (DN300, DN200, DN150, échappement), reprise mortier, étanchéité, calfeutrement | 2d | 2026-11-26 | 2026-11-27 | 30 |
| 83 |  | [GO] Pose nouvelle pièce de scellement refoulement DN200 local GE + calfeutrement | 1d | 2026-11-26 | 2026-11-26 | 32 |
| 84 |  | [SPK] Fourniture et installation du nouveau GMPD B2 (équipements, échappement/silencieux, réservoir fuel 500 L double peau) | 5d | 2026-11-30 | 2026-12-04 | 82, 28 |
| 85 |  | [SPK] Tuyauteries DN300 aspiration / DN200 refoulement dans le local B2 + canne d'essai DN150 | 4d | 2026-12-07 | 2026-12-10 | 84, 82 |
| 86 |  | [SPK] Remplacement nourrice pressostatique source B2 + pressostats | 1d | 2026-12-11 | 2026-12-11 | 85 |
| 87 |  | [SPK] Étalonnage du débitmètre électromagnétique source B2 (écart > 5 %) | 1d | 2026-12-11 | 2026-12-11 | 85 |
| 88 |  | [SPK] Armoire de commande/démarrage GMPD, câblage, raccordement armoire générale | 3d | 2026-12-07 | 2026-12-09 | 84 |
| 89 |  | [SPK] Ventilation mécanique avec clapet coupe-feu (sortie existante réutilisée) + calfeutrement coupe-feu des passages | 2d | 2026-11-30 | 2026-12-01 | 82 |
| 90 |  | [SPK] Sonde de température + thermostat reportés en alarme, BAES, prolongation protection sprinkleur dans l'entrée | 2d | 2026-12-02 | 2026-12-03 | 89 |
| 91 |  | [SPK] Affichages d'exploitation et étiquetage local B2 | 1d | 2026-12-04 | 2026-12-04 | 90 |
| 92 |  | [GO] Restauration couche de forme, dalle portée, soubassement et cuvelage local GE + durcisseur de dalle | 3d | 2026-12-10 | 2026-12-14 | 83, 72 |
| 93 | 9 | **9. LOCAL SPRINKLEUR SOURCE A + POSTES** | 7d | 2026-11-04 | 2026-11-13 |  |
| 94 |  | [GO] Percement des voiles béton façade Nord : ventilation haute et basse + redressement des tableaux | 2d | 2026-11-04 | 2026-11-05 | 4 |
| 95 |  | [SPK] Fourniture et pose des grilles de ventilation haute et basse | 1d | 2026-11-06 | 2026-11-06 | 94 |
| 96 |  | [SPK] Flocage de la toiture coupe-feu 1 h (local source A) | 2d | 2026-11-04 | 2026-11-05 | 4 |
| 97 |  | [SPK] Remplacement protection sprinkleur local A + postes (PC5 : CPE + vanne d'isolement, indicateur de passage d'eau), extension local eau glacée, gaine technique | 4d | 2026-11-05 | 2026-11-10 | 8 |
| 98 |  | [SPK] Sonde de température reportée en alarme + contacts anti-intrusion (portes local sprinkleur, atelier, TGBT) | 2d | 2026-11-12 | 2026-11-13 | 97 |
| 99 |  | [SPK] Armoire de répartition équipements annexes + disjoncteur depuis TGBT | 2d | 2026-11-04 | 2026-11-05 | 4 |
| 100 |  | [SPK] Affichages d'exploitation, étiquetage, BAPI, reprise peinture des canalisations du local | 2d | 2026-11-12 | 2026-11-13 | 97 |
| 101 | 10 | **10. SOURCES A / B1 / JOCKEY (AVANT vidange B2 - la B2 reste en service pendant ces travaux)** | 8d | 2026-11-05 | 2026-11-17 |  |
| 102 |  | [SPK] Dépose électropompe source B1 + équipements et canalisations, consignation électricité, câbles neutralisés | 2d | 2026-11-05 | 2026-11-06 | 8 |
| 103 |  | [SPK] Mise en place mesures compensatoires + raccordement provisoire pour coupure de la source A | 1d | 2026-11-05 | 2026-11-05 | 8 |
| 104 |  | [SPK] Remplacement électropompe source A (inclus nourrice pressostatique sources) | 3d | 2026-11-06 | 2026-11-10 | 103 |
| 105 |  | [SPK] Remplacement pompe jockey + alimentation d'aspiration sur eau de ville | 2d | 2026-11-06 | 2026-11-09 | 103 |
| 106 |  | [SPK] Reprise tuyauteries aspiration et refoulement source A + vannes reportées en alarme | 2d | 2026-11-12 | 2026-11-13 | 104 |
| 107 |  | [SPK] Remplacement armoire pompe jockey & source A + disjoncteur + câbles CR1 en amont coupure générale | 3d | 2026-11-06 | 2026-11-10 | 103 |
| 108 |  | [SPK] Réserve 30 m³ : remplissage manuel, plaque descriptive, remplacement contact de niveau + report alarme + test | 1d | 2026-11-06 | 2026-11-06 | 103 |
| 109 |  | [SPK] Dépose nourrice pressostatique (anciennes jockey, A, B1) + câbles | 1d | 2026-11-12 | 2026-11-12 | 104, 102 |
| 110 |  | [SPK] Nouvelle canne d'essai source A (vannes reportées en alarme) | 1d | 2026-11-16 | 2026-11-16 | 106 |
| 111 |  | [SPK] Réglage des seuils de démarrage de chaque source (NF EN 12845) | 1d | 2026-11-12 | 2026-11-12 | 104 |
| 112 |  | [SPK] Remise en service source A + levée des mesures compensatoires | 1d | 2026-11-17 | 2026-11-17 | 106, 107, 108, 110, 105, 109, 111 |
| 113 | 11 | **11. POSTES DE CONTRÔLE (après retour de la source A, B2 vidangee : mesures compensatoires)** | 12d | 2026-11-18 | 2026-12-03 |  |
| 114 |  | [SPK] Entretien triennal poste de contrôle PC1 (démontage, joints, clapet compensateur, essai réel point F) | 1d | 2026-11-18 | 2026-11-18 | 112 |
| 115 |  | [SPK] Entretien triennal poste de contrôle PC2 (démontage, joints, clapet compensateur, essai réel point F) | 1d | 2026-11-19 | 2026-11-19 | 114 |
| 116 |  | [SPK] Entretien triennal poste de contrôle PC3 (démontage, joints, clapet compensateur, essai réel point F) | 1d | 2026-11-20 | 2026-11-20 | 115 |
| 117 |  | [SPK] Entretien triennal poste de contrôle PC4 (démontage, joints, clapet compensateur, essai réel point F) | 1d | 2026-11-23 | 2026-11-23 | 116 |
| 118 |  | [SPK] Entretien triennal poste de contrôle PC5 (démontage, joints, clapet compensateur, essai réel point F) | 1d | 2026-11-24 | 2026-11-24 | 117 |
| 119 |  | [SPK] Entretien triennal poste de contrôle PC6 (démontage, joints, clapet compensateur, essai réel point F) | 1d | 2026-11-25 | 2026-11-25 | 118 |
| 120 |  | [SPK] Entretien triennal poste de contrôle PC7 (démontage, joints, clapet compensateur, essai réel point F) | 1d | 2026-11-26 | 2026-11-26 | 119 |
| 121 |  | [SPK] PC6 : dépose du vieux manomètre + remplacement du pressostat | 1d | 2026-11-26 | 2026-11-26 | 119 |
| 122 |  | [SPK] Contrôle visuel d'écoulement sur essai des PC + remplacement des gongs hydrauliques par une nourrice commune | 2d | 2026-11-27 | 2026-11-30 | 120 |
| 123 |  | [SPK] Bypass sur tous les postes de contrôle (7) avec vannes reportées en alarme | 4d | 2026-11-27 | 2026-12-02 | 120 |
| 124 |  | [SPK] Numérotation vannes barrage/test/vidange + schémas à jour sur colonnes montantes | 1d | 2026-12-03 | 2026-12-03 | 123, 122 |
| 125 | 12 | **12. ÉLECTRICITÉ, ALARMES, MISE À LA TERRE, PEINTURE (SPK)** | 56d | 2026-11-06 | 2027-01-27 |  |
| 126 |  | [SPK] Armoire électrique locale équipements sprinkleurs (asservissement et protection) dans le local source | 3d | 2026-11-06 | 2026-11-10 | 99 |
| 127 |  | [SPK] Fourniture, installation et câblage de tous les équipements sprinkleurs du local source | 3d | 2026-12-10 | 2026-12-14 | 126, 88 |
| 128 |  | [SPK] Raccordement des alimentations électriques du tableau d'alarme | 1d | 2026-12-15 | 2026-12-15 | 127 |
| 129 |  | [SPK] Tresses de mise à la terre des équipements sprinkleurs + nourrice des postes (raccord boucle de terre du radier) | 1d | 2027-01-27 | 2027-01-27 | 43, 57, 106 |
| 130 |  | [SPK] Report des alarmes créées (niveau réserve, vannes, températures, intrusion, CPE...) | 2d | 2027-01-08 | 2027-01-11 | 128, 80, 98, 90 |
| 131 |  | [SPK] Vérification de toutes les alarmes, existantes et créées | 1d | 2027-01-12 | 2027-01-12 | 130 |
| 132 |  | [SPK] Peinture des réseaux apparents (y compris raccords mécaniques) | 2d | 2026-12-11 | 2026-12-14 | 106, 85, 100 |
| 133 | 13 | **13. ESSAIS, MISE EN SERVICE ET REMISE EN SERVICE B2 (SPK)** | 61d | 2026-11-18 | 2027-02-12 |  |
| 134 |  | [SPK] Épreuves hydrauliques des réseaux (locaux B2, cuve, canne d'essai) | 2d | 2027-02-02 | 2027-02-03 | 85, 61 |
| 135 |  | [SPK] Essais source B2 : GMPD (démarrage, débit 360 m³/h, pression), seuils, débitmètre, canne d'essai | 2d | 2027-02-04 | 2027-02-05 | 88, 86, 87, 61, 134 |
| 136 |  | [SPK] REMISE EN SERVICE SOURCE B2 + levée des mesures compensatoires (retour à l'état de protection) | 1d | 2027-02-08 | 2027-02-08 | 135, 90, 131 |
| 137 |  | [SPK] Identification du matériel et des réseaux (pochoir) | 2d | 2026-12-15 | 2026-12-16 | 132 |
| 138 |  | [SPK] Vérifications, tests et contrôles des postes de contrôle, alarmes et points F | 2d | 2027-01-13 | 2027-01-14 | 124, 121, 131 |
| 139 |  | [SPK] Vérifications et essais des différentes sources conservées (A, jockey) | 2d | 2026-11-18 | 2026-11-19 | 112 |
| 140 |  | [SPK] Pièces de rechange protection automatique incendie | 1d | 2026-11-20 | 2026-11-20 | 139 |

| ID | WBS | Task | Duration | Start | Finish | Predecessors |
| --- | --- | --- | --- | --- | --- | --- |
| 141 |  | [SPK] Levée des remarques du dernier rapport semestriel Q1 (+ remarques complémentaires) | 2d | 2027-01-15 | 2027-01-18 | 138, 132, 100 |
| 142 |  | [SPK] Mise en service, séance de formation et d'instruction exploitant | 1d | 2027-02-09 | 2027-02-09 | 138, 139, 137, 140, 136 |
| 143 |  | [SPK] DOE lot sprinklage (plans de récolement, notices, PV d'essais) | 3d | 2027-02-10 | 2027-02-12 | 142, 141 |
| 144 | 14 | **14. BRISE-VUE : CHARPENTE, BARDAGE BOIS, PORTE (après cuve et réseaux)** | 10d | 2027-01-27 | 2027-02-09 |  |
| 145 |  | [GO/CM] Montage charpente métallique brise-vue (poteaux, pannes, contreventement) + scellement définitif des ancrages | 4d | 2027-01-27 | 2027-02-01 | 56, 57 |
| 146 |  | [GO/Bardage] Sous-construction du bardage (profils oméga acier galvanisé sur poteaux) | 3d | 2027-01-29 | 2027-02-02 | 145SS+2d |
| 147 |  | [GO/Bardage] Lames de bardage bois douglas à claire-voie (espacement 20 mm), coupes à 45°, saturateur | 6d | 2027-02-02 | 2027-02-09 | 146SS+2d |
| 148 |  | [GO] Pose porte d'accès cuve B2 (ferme-porte, barre anti-panique, serrure compatible site) | 1d | 2027-02-03 | 2027-02-03 | 146 |
| 149 | 15 | **15. VOIRIES ET ESPACES VERTS - REMISE EN ÉTAT (VRD)** | 37d | 2026-12-16 | 2027-02-08 |  |
| 150 |  | [VRD] Remise en place des bordures béton (joints résistants UV et hydrocarbures) | 1d | 2026-12-16 | 2026-12-16 | 74, 10 |
| 151 |  | [VRD] Réfection voie technique : reprofilage GNT 30 cm, géotextile cl.4, enrobé noir 5 cm au droit des réseaux | 3d | 2027-01-12 | 2027-01-14 | 150, 68 |
| 152 |  | [VRD] Dépose des pistes d'accès chantier + évacuation + reprofilage | 1d | 2027-02-02 | 2027-02-02 | 145, 78, 92, 68 |
| 153 |  | [VRD] Mouvements de terres, nivellement espaces verts + apport terre végétale 0,30 m mini | 2d | 2027-02-03 | 2027-02-04 | 152 |
| 154 |  | [VRD] Préparation avant engazonnement (nettoyage, rotavator 0,20 m, amendements, réglage) | 1d | 2027-02-05 | 2027-02-05 | 153 |
| 155 |  | [VRD] Engazonnement (semis 3 kg/are, roulage, ratissage) - plantations gazon | 1d | 2027-02-08 | 2027-02-08 | 154 |
| 156 |  | [VRD] Réfection des cheminements de chantier | 1d | 2027-02-03 | 2027-02-03 | 152 |
| 157 |  | [VRD] Curage + contrôle caméra des réseaux EU en fin de travaux | 1d | 2027-02-03 | 2027-02-03 | 78, 152 |
| 158 | 16 | **16. FIN DE CHANTIER, DOE, RÉCEPTION PHASE 1** | 5d | 2027-02-10 | 2027-02-16 |  |
| 159 |  | [GO] Constat d'huissier contradictoire de fin de travaux | 1d | 2027-02-10 | 2027-02-10 | 155, 156, 151, 157, 147 |
| 160 |  | [GO] DOE lot GO/VRD : récolement ouvrages enterrés, PV essais béton/pieux, fiches techniques | 3d | 2027-02-11 | 2027-02-15 | 159, 38 |
| 161 |  | [SPK] Nettoyage + repli du chantier : base vie, clôture, armoire de chantier, raccordements | 2d | 2027-02-11 | 2027-02-12 | 142, 159, 152 |
| 162 |  | [MOA/MOE] Opérations préalables à la réception (OPR) Phase 1 | 1d | 2027-02-16 | 2027-02-16 | 143, 160, 161 |
| 163 |  | FIN PHASE 1 - Réception des travaux | 0d | 2027-02-16 | 2027-02-16 | 162 |
| 164 | 17 | **17. PRESTATIONS TRANSVERSES (hamacs - durées calées sur les tâches liées)** | 72d | 2026-11-02 | 2027-02-12 |  |
| 165 |  | [GO] Gestion des portails / accès de chantier (ouverture, fermeture, surveillance) | 70d | 2026-11-02 | 2027-02-10 | 4SS, 159FF |
| 166 |  | [GO] Entretien et nettoyage des abords, accès et voies (permanent) | 70d | 2026-11-02 | 2027-02-10 | 4SS, 159FF |
| 167 |  | [GO/VRD] Homme trafic (voie pompier, arrivées/départs camions) - phases démolition à remise en état | 59d | 2026-11-09 | 2027-02-02 | 20SS, 152FF |
| 168 |  | [SPK] Homme trafic - livraisons cuve, GMPD, fonte, levage | 23d | 2026-12-30 | 2027-02-01 | 52SS, 61FF |
| 169 |  | [SPK] Encadrement de chantier + location nacelle / bungalow / container | 72d | 2026-11-02 | 2027-02-12 | 4SS, 161FF |
| 170 |  | [GO] Bennes de chantier + évacuation gravats (part du lot) | 59d | 2026-11-09 | 2027-02-02 | 20SS, 152FF |

## Version 2 (data date 2026-11-02, saved 2026-10-05)

Note of the change: Gantt lisible (PDF/PNG) : noms des tâches et couleurs par lot

Last finish stays 2027-02-16.

Changed:

| ID | Task | Other |
| --- | --- | --- |
| 113 | **11. POSTES DE CONTRÔLE (après retour de la source A, B2 vidangée : mesures compensatoires)** | was named 11. POSTES DE CONTRÔLE (après retour de la source A, B2 vidangee : mesures compensatoires) |

## Version 3 (data date 2026-11-02, saved 2026-10-05)

Note of the change: Lot unique EIFFAGE (GO + VRD) dans planning, Gantt et exports

Last finish stays 2027-02-16.

Changed:

| ID | Task | Other |
| --- | --- | --- |
| 9 | [EIFFAGE] Pistes d'accès engins + plateforme de circulation sur géotextile classe 5 | was named [GO] Pistes d'accès engins + plateforme de circulation sur géotextile classe 5 |
| 10 | [EIFFAGE] Dépose et stockage des bordures béton (réemploi en fin de chantier) | was named [GO] Dépose et stockage des bordures béton (réemploi en fin de chantier) |
| 12 | [EIFFAGE] Piquetage/marquage et reconnaissance des réseaux existants dans l'emprise (DN100 AEP, DN150 incendie, EU/EV/EP/électricité/fibre) | was named [GO] Piquetage/marquage et reconnaissance des réseaux existants dans l'emprise (DN100 AEP, DN150 incendie, EU/EV/EP/électricité/fibre) |
| 13 | [EIFFAGE] Dévoiement réseau incendie DN150 + alimentation AEP/arrosage DN100 hors emprise radier (essais, DOE) | was named [GO] Dévoiement réseau incendie DN150 + alimentation AEP/arrosage DN100 hors emprise radier (essais, DOE) |
| 14 | [EIFFAGE] Dévoiement EU / EV / EP / électricité / fibre / arrosage si nécessaire (relevé NCA) | was named [VRD] Dévoiement EU / EV / EP / électricité / fibre / arrosage si nécessaire (relevé NCA) |
| 20 | [EIFFAGE] Dépose brise-vue bois + charpente métallique support + grille d'accès/porte grillagée (évacuation) | was named [GO] Dépose brise-vue bois + charpente métallique support + grille d'accès/porte grillagée (évacuation) |
| 22 | [EIFFAGE] Dépose des réseaux existants cuve B2 → local B2 → local A/GE (terrassement, évacuation, remblaiement) | was named [VRD] Dépose des réseaux existants cuve B2 → local B2 → local A/GE (terrassement, évacuation, remblaiement) |
| 23 | [EIFFAGE] Démolition du radier existant + évacuation des gravats (maîtrise poussières) | was named [GO] Démolition du radier existant + évacuation des gravats (maîtrise poussières) |
| 24 | [EIFFAGE] Étêtage des fondations existantes à -1,00 m du niveau plateforme + évacuation | was named [GO] Étêtage des fondations existantes à -1,00 m du niveau plateforme + évacuation |
| 25 | [EIFFAGE] Relevé géomètre + plan de récolement des ouvrages enterrés, adaptation des fondations | was named [GO] Relevé géomètre + plan de récolement des ouvrages enterrés, adaptation des fondations |
| 26 | [EIFFAGE] (OPTION 5.4.4) Purge des fondations profondes existantes (-80 cm sous niveau final) + remblai sablo-graveleux | was named [GO] (OPTION 5.4.4) Purge des fondations profondes existantes (-80 cm sous niveau final) + remblai sablo-graveleux |
| 30 | [EIFFAGE] Dépose des pièces de scellement existantes local B2 + reprise des percements (DN300, DN200, DN150, échappement) | was named [GO] Dépose des pièces de scellement existantes local B2 + reprise des percements (DN300, DN200, DN150, échappement) |
| 31 | [EIFFAGE] Démolition contrôlée réservation dalle basse et soubassement local GE (sciage, mise à nu des armatures) | was named [GO] Démolition contrôlée réservation dalle basse et soubassement local GE (sciage, mise à nu des armatures) |
| 32 | [EIFFAGE] Dépose pièce de scellement existante local GE + création du percement DN200 | was named [GO] Dépose pièce de scellement existante local GE + création du percement DN200 |
| 34 | [EIFFAGE] Plateforme de travail pour pieux (portance EV2 > 50 MPa, géotextile) | was named [GO] Plateforme de travail pour pieux (portance EV2 > 50 MPa, géotextile) |
| 35 | [EIFFAGE] Épuisement des eaux / rabattement de nappe (nappe ~ 27,4 NGF) pendant les fondations | was named [GO] Épuisement des eaux / rabattement de nappe (nappe ~ 27,4 NGF) pendant les fondations |
| 36 | [EIFFAGE] Pieux à tarière creuse (amenée/repli du matériel, forage, armatures, béton) - ~20 à 25 u. à confirmer PEO | was named [GO] Pieux à tarière creuse (amenée/repli du matériel, forage, armatures, béton) - ~20 à 25 u. à confirmer PEO |
| 37 | [EIFFAGE] Stockage sur polyane et évacuation des terres et boues de forage + nettoyage voies | was named [GO] Stockage sur polyane et évacuation des terres et boues de forage + nettoyage voies |
| 38 | [EIFFAGE] Essais et contrôle des pieux (DTU 13.2 / NF P94-262) | was named [GO] Essais et contrôle des pieux (DTU 13.2 / NF P94-262) |
| 39 | [EIFFAGE] Recépage des pieux | was named [GO] Recépage des pieux |
| 40 | [EIFFAGE] Terrassement fouille radier + substitution remblais de portance + fond de forme (débord 1 m) | was named [GO] Terrassement fouille radier + substitution remblais de portance + fond de forme (débord 1 m) |
| 41 | [EIFFAGE] Puisard de trop-plein de la cuve (terrassement, béton de propreté, grille circulable) | was named [GO] Puisard de trop-plein de la cuve (terrassement, béton de propreté, grille circulable) |
| 42 | [EIFFAGE] Béton de propreté (e >= 5 cm) sous radier | was named [GO] Béton de propreté (e >= 5 cm) sous radier |
| 43 | [EIFFAGE] Boucle de terre fond de fouille (câble nu 25 mm2, R <= 3 ohms) + attentes de terre cuve | was named [GO] Boucle de terre fond de fouille (câble nu 25 mm2, R <= 3 ohms) + attentes de terre cuve |
| 44 | [EIFFAGE] Pose massifs, platines et boîtes de réservation de pre-scellement (poteaux brise-vue) | was named [GO] Pose massifs, platines et boîtes de réservation de pre-scellement (poteaux brise-vue) |
| 45 | [EIFFAGE] Couche de forme + sablon d'égalisation + film polyéthylène | was named [GO] Couche de forme + sablon d'égalisation + film polyéthylène |
| 46 | [EIFFAGE] Pose et incorporation de la tuyauterie d'aspiration DN300 sous radier (fournie SPK) + validation implantation SPK/EIFFAGE | was named [GO] Pose et incorporation de la tuyauterie d'aspiration DN300 sous radier (fournie SPK) + validation implantation SPK/GO |
| 47 | [EIFFAGE] Drain périphérique / gestion des eaux autour du radier (si G2PRO l'impose) | was named [GO] Drain périphérique / gestion des eaux autour du radier (si G2PRO l'impose) |
| 48 | [EIFFAGE] Ferraillage radier (TS + HA), attentes pieux, réservations, fourreaux, coffrage de rives et bêches périphériques | was named [GO] Ferraillage radier (TS + HA), attentes pieux, réservations, fourreaux, coffrage de rives et bêches périphériques |
| 49 | [EIFFAGE] Coulage du radier béton C25/30 XC2 XF1 (parement soigné, circulations brossées antidérapantes) | was named [GO] Coulage du radier béton C25/30 XC2 XF1 (parement soigné, circulations brossées antidérapantes) |
| 50 | [EIFFAGE] Durcissement du radier avant chargement de la cuve (délai à valider BET / bureau de contrôle) | was named [GO] Durcissement du radier avant chargement de la cuve (délai à valider BET / bureau de contrôle) |
| 58 | [EIFFAGE] Joint ciment périphérique autour de la cornière de fixation de la cuve | was named [GO] Joint ciment périphérique autour de la cornière de fixation de la cuve |
| 64 | [EIFFAGE] Ouverture tranchée commune (~ 25 ml estimés) | was named [VRD] Ouverture tranchée commune (~ 25 ml estimés) |
| 65 | [EIFFAGE] Fourreaux électriques 2 x Ø90 (local B2 / réserve d'eau) + chambre de tirage | was named [VRD] Fourreaux électriques 2 x Ø90 (local B2 / réserve d'eau) + chambre de tirage |
| 68 | [EIFFAGE] Grillage avertisseur + remblaiement et compactage tranchée 1 (95 % OPM) | was named [VRD] Grillage avertisseur + remblaiement et compactage tranchée 1 (95 % OPM) |
| 70 | [EIFFAGE] Ouverture tranchée commune (~ 60 ml estimés, sciage voirie lourde + espace vert) | was named [VRD] Ouverture tranchée commune (~ 60 ml estimés, sciage voirie lourde + espace vert) |
| 71 | [EIFFAGE] Fourreaux électriques 2 x Ø90 (local GE / local B2) + chambre de tirage | was named [VRD] Fourreaux électriques 2 x Ø90 (local GE / local B2) + chambre de tirage |
| 74 | [EIFFAGE] Grillage avertisseur + remblaiement et compactage tranchée 2 | was named [VRD] Grillage avertisseur + remblaiement et compactage tranchée 2 |
| 76 | [EIFFAGE] Tranchée + réseau de collecte extérieur EU PVC DN200 (puisard/vidange → regard existant), regard 500x500 | was named [VRD] Tranchée + réseau de collecte extérieur EU PVC DN200 (puisard/vidange → regard existant), regard 500x500 |
| 77 | [EIFFAGE] Raccordement sur réseau EU existant (branchement), boîte de branchement, reprise des sorties EU à 1,00 m | was named [VRD] Raccordement sur réseau EU existant (branchement), boîte de branchement, reprise des sorties EU à 1,00 m |
| 78 | [EIFFAGE] Remblaiement et compactage tranchée EU | was named [VRD] Remblaiement et compactage tranchée EU |
| 82 | [EIFFAGE] Pose nouvelles pièces de scellement local B2 (DN300, DN200, DN150, échappement), reprise mortier, étanchéité, calfeutrement | was named [GO] Pose nouvelles pièces de scellement local B2 (DN300, DN200, DN150, échappement), reprise mortier, étanchéité, calfeutrement |
| 83 | [EIFFAGE] Pose nouvelle pièce de scellement refoulement DN200 local GE + calfeutrement | was named [GO] Pose nouvelle pièce de scellement refoulement DN200 local GE + calfeutrement |
| 92 | [EIFFAGE] Restauration couche de forme, dalle portée, soubassement et cuvelage local GE + durcisseur de dalle | was named [GO] Restauration couche de forme, dalle portée, soubassement et cuvelage local GE + durcisseur de dalle |
| 94 | [EIFFAGE] Percement des voiles béton façade Nord : ventilation haute et basse + redressement des tableaux | was named [GO] Percement des voiles béton façade Nord : ventilation haute et basse + redressement des tableaux |
| 145 | [EIFFAGE] Montage charpente métallique brise-vue (poteaux, pannes, contreventement) + scellement définitif des ancrages | was named [GO/CM] Montage charpente métallique brise-vue (poteaux, pannes, contreventement) + scellement définitif des ancrages |
| 146 | [EIFFAGE] Sous-construction du bardage (profils oméga acier galvanisé sur poteaux) | was named [GO/Bardage] Sous-construction du bardage (profils oméga acier galvanisé sur poteaux) |
| 147 | [EIFFAGE] Lames de bardage bois douglas à claire-voie (espacement 20 mm), coupes à 45°, saturateur | was named [GO/Bardage] Lames de bardage bois douglas à claire-voie (espacement 20 mm), coupes à 45°, saturateur |
| 148 | [EIFFAGE] Pose porte d'accès cuve B2 (ferme-porte, barre anti-panique, serrure compatible site) | was named [GO] Pose porte d'accès cuve B2 (ferme-porte, barre anti-panique, serrure compatible site) |
| 149 | **15. VOIRIES ET ESPACES VERTS - REMISE EN ÉTAT (EIFFAGE)** | was named 15. VOIRIES ET ESPACES VERTS - REMISE EN ÉTAT (VRD) |
| 150 | [EIFFAGE] Remise en place des bordures béton (joints résistants UV et hydrocarbures) | was named [VRD] Remise en place des bordures béton (joints résistants UV et hydrocarbures) |
| 151 | [EIFFAGE] Réfection voie technique : reprofilage GNT 30 cm, géotextile cl.4, enrobé noir 5 cm au droit des réseaux | was named [VRD] Réfection voie technique : reprofilage GNT 30 cm, géotextile cl.4, enrobé noir 5 cm au droit des réseaux |
| 152 | [EIFFAGE] Dépose des pistes d'accès chantier + évacuation + reprofilage | was named [VRD] Dépose des pistes d'accès chantier + évacuation + reprofilage |
| 153 | [EIFFAGE] Mouvements de terres, nivellement espaces verts + apport terre végétale 0,30 m mini | was named [VRD] Mouvements de terres, nivellement espaces verts + apport terre végétale 0,30 m mini |
| 154 | [EIFFAGE] Préparation avant engazonnement (nettoyage, rotavator 0,20 m, amendements, réglage) | was named [VRD] Préparation avant engazonnement (nettoyage, rotavator 0,20 m, amendements, réglage) |
| 155 | [EIFFAGE] Engazonnement (semis 3 kg/are, roulage, ratissage) - plantations gazon | was named [VRD] Engazonnement (semis 3 kg/are, roulage, ratissage) - plantations gazon |
| 156 | [EIFFAGE] Réfection des cheminements de chantier | was named [VRD] Réfection des cheminements de chantier |
| 157 | [EIFFAGE] Curage + contrôle caméra des réseaux EU en fin de travaux | was named [VRD] Curage + contrôle caméra des réseaux EU en fin de travaux |
| 159 | [EIFFAGE] Constat d'huissier contradictoire de fin de travaux | was named [GO] Constat d'huissier contradictoire de fin de travaux |
| 160 | [EIFFAGE] DOE lot EIFFAGE : récolement ouvrages enterrés, PV essais béton/pieux, fiches techniques | was named [GO] DOE lot GO/VRD : récolement ouvrages enterrés, PV essais béton/pieux, fiches techniques |
| 165 | [EIFFAGE] Gestion des portails / accès de chantier (ouverture, fermeture, surveillance) | was named [GO] Gestion des portails / accès de chantier (ouverture, fermeture, surveillance) |
| 166 | [EIFFAGE] Entretien et nettoyage des abords, accès et voies (permanent) | was named [GO] Entretien et nettoyage des abords, accès et voies (permanent) |
| 167 | [EIFFAGE] Homme trafic (voie pompier, arrivées/départs camions) - phases démolition à remise en état | was named [GO/VRD] Homme trafic (voie pompier, arrivées/départs camions) - phases démolition à remise en état |
| 170 | [EIFFAGE] Bennes de chantier + évacuation gravats (part du lot) | was named [GO] Bennes de chantier + évacuation gravats (part du lot) |
